# 411 Project Schedule V2

Schedule from MS Project, 2017-10-05 to 2017-12-04.

## Calendars

- Standard: Mon-Fri 08:00-12:00, 13:00-17:00; Sat-Sun off.

## Resources

| Resource |
| --- |
| Julian |
| Max |
| Fouric |
| John |

## Schedule

| ID | WBS | Task | Type | Duration | Start | Finish | Predecessors | Total slack | Constraint | Resources | Work |
| --- | --- | --- | --- | --- | --- | --- | --- | --- | --- | --- | --- |
| 1 | 1 | **Design** |  | 20d | 2017-10-05 | 2017-11-01 |  |  |  |  | 1707h |
| 2 | 1.1 | Brainstorm Ideas | manual | 5d | 2017-10-05 | 2017-10-11 |  |  |  | Julian; Max; Fouric; John | 612h |
| 3 | 1.2 | Select Final Project | manual | 2d | 2017-10-12 | 2017-10-13 | 2 |  |  | Fouric; John; Julian; Max | 132h |
| 4 | 1.3 | Develop requirements document | manual | 2d | 2017-10-14 | 2017-10-16 | 3 |  |  | Fouric; John; Julian; Max | 228h |
| 5 | 1.4 | Review requirements document | manual | 2d | 2017-10-17 | 2017-10-18 | 4 |  |  | Fouric; John; Julian; Max | 132h |
| 6 | 1.5 | **Design Hardware** |  | 10d | 2017-10-19 | 2017-11-01 |  |  |  |  | 207h |
| 7 | 1.5.1 | **Design Preliminary Schematic** |  | 5d | 2017-10-19 | 2017-10-25 | 5 |  |  |  | 123h |
| 8 | 1.5.1.1 | Design Power Module |  | 1d | 2017-10-19 | 2017-10-19 |  | 4d |  | Fouric | 9h |
| 9 | 1.5.1.2 | Design User Interface module |  | 2d | 2017-10-19 | 2017-10-20 |  | 3d |  | Max | 33h |
| 10 | 1.5.1.3 | Design flex sensor output | manual | 2d | 2017-10-20 | 2017-10-23 |  |  | start no earlier than 2017-10-20 | Fouric | 81h |
| 11 | 1.5.2 | Schematic review | manual | 1d | 2017-10-26 | 2017-10-26 | 7 |  |  | Fouric; Max | 18h |
| 12 | 1.5.3 | **Design final schematic** |  | 3d | 2017-10-27 | 2017-10-31 | 11 |  |  |  | 66h |
| 13 | 1.5.3.1 | Pick out final parts | manual | 1d | 2017-10-27 | 2017-10-27 |  |  |  | Max | 9h |
| 14 | 1.5.3.2 | Update schematic with review feedback | manual | 2d | 2017-10-28 | 2017-10-30 |  |  |  | Max | 57h |
| 15 | 1.5.4 | Schematic Complete | milestone, manual | 0d | 2017-11-01 | 2017-11-01 | 12 |  |  | Fouric; John; Julian; Max |  |
| 16 | 1.6 | **Design software** |  | 10d | 2017-10-19 | 2017-11-01 |  |  |  |  | 396h |
| 17 | 1.6.1 | **Produce preliminary software design** |  | 5d | 2017-10-19 | 2017-10-25 | 5 |  |  |  | 138h |
| 18 | 1.6.1.1 | Produce software flowchart | manual | 3d | 2017-10-19 | 2017-10-23 |  |  |  | John | 105h |
| 19 | 1.6.1.2 | Design input operation | manual | 1d | 2017-10-23 | 2017-10-24 | 18 |  |  | Julian | 24h |
| 20 | 1.6.1.3 | Design user interface | manual | 1d | 2017-10-25 | 2017-10-25 | 19 |  |  | Julian | 9h |
| 21 | 1.6.2 | Software design review | manual | 4d | 2017-10-26 | 2017-10-31 | 17 |  |  | John; Julian | 258h |
| 22 | 1.6.3 | Finalize software design | milestone, manual | 0d | 2017-11-01 | 2017-11-01 | 21 |  |  | John |  |
| 23 | 1.7 | Produced final project design | milestone, manual | 0d | 2017-10-05 | 2017-10-05 |  |  |  |  |  |
| 24 | 2 | **Hardware** |  | 8d | 2017-11-02 | 2017-11-13 |  |  |  |  | 375h |
| 25 | 2.1 | **Document board functionality** |  | 1d | 2017-11-02 | 2017-11-02 | 6 |  |  |  | 16h |
| 26 | 2.1.1 | Document board pinouts |  | 1d | 2017-11-02 | 2017-11-02 |  | 0.12d |  | Julian | 8h |
| 27 | 2.1.2 | Document board functionality |  | 1d | 2017-11-02 | 2017-11-02 |  | 0.12d |  | Max | 8h |

| ID | WBS | Task | Type | Duration | Start | Finish | Predecessors | Total slack | Resources | Work |
| --- | --- | --- | --- | --- | --- | --- | --- | --- | --- | --- |
| 28 | 2.2 | **Create preliminary prototype** |  | 1d | 2017-11-03 | 2017-11-03 | 25 |  |  | 17h |
| 29 | 2.2.1 | **Test flex sensor operation** |  | 1d | 2017-11-03 | 2017-11-03 |  |  |  | 8h |
| 30 | 2.2.1.1 | Document range of values for variable resistance |  | 0.5d | 2017-11-03 | 2017-11-03 |  | 8.5d | Max | 4h |
| 31 | 2.2.1.2 | Determine values useful for posture detection |  | 0.5d | 2017-11-03 | 2017-11-03 |  | 8.5d | Max | 4h |
| 32 | 2.2.2 | Test LED's and buzzer | manual | 1d | 2017-11-03 | 2017-11-03 |  |  | Fouric | 9h |
| 33 | 2.3 | Produced prototype board hardware setup | milestone, manual | 0d | 2017-11-02 | 2017-11-02 | 28 |  |  |  |
| 34 | 2.4 | Produce preliminary PCB layout | manual | 3d | 2017-11-06 | 2017-11-08 | 15 |  | Fouric; Max | 114h |
| 35 | 2.5 | Review PCB | manual | 1d | 2017-11-09 | 2017-11-09 | 34 |  | Fouric; Max | 18h |
| 36 | 2.6 | Ordered parts | milestone, manual | 0d | 2017-11-02 | 2017-11-02 |  |  |  |  |
| 37 | 2.7 | Produce final PCB and order | manual | 3d | 2017-11-10 | 2017-11-14 | 35 |  | Fouric; Max | 210h |
| 38 | 3 | **Software** |  | 8d | 2017-11-02 | 2017-11-13 |  |  |  | 327h |
| 39 | 3.1 | Boot Nucleo dev boards with basic code |  | 1d | 2017-11-02 | 2017-11-02 |  | 9d | John | 9h |
| 40 | 3.2 | **Create preliminary prototype** |  | 3d | 2017-11-02 | 2017-11-04 | 16 |  |  | 42h |
| 41 | 3.2.1 | Interface with flex sensor |  | 2d | 2017-11-02 | 2017-11-03 |  | 4d | Julian | 33h |
| 42 | 3.2.2 | Interface with LED's and buzzer |  | 1d | 2017-11-02 | 2017-11-02 |  | 5d | John | 9h |
| 43 | 3.3 | **Produce first software cut** |  | 4d | 2017-11-05 | 2017-11-08 | 25, 40 |  |  | 66h |
| 44 | 3.3.1 | Code user input interface |  | 2d | 2017-11-05 | 2017-11-06 |  | 4d | Julian | 33h |
| 45 | 3.3.2 | Code information output interface |  | 2d | 2017-11-05 | 2017-11-06 |  | 4d | John | 33h |
| 46 | 3.4 | Produced first functional prototype | milestone, manual | 0d | 2017-11-02 | 2017-11-02 | 43 |  |  |  |
| 47 | 3.5 | **Produce second software cut** |  | 3d | 2017-11-09 | 2017-11-13 | 46 |  |  | 210h |
| 48 | 3.5.1 | Develop flex sensor driver |  | 3d | 2017-11-09 | 2017-11-13 |  | 2d | John; Julian | 210h |
| 49 | 4 | **Integration** |  | 6d | 2017-11-14 | 2017-11-21 | 24, 38 |  |  | 162h |
| 50 | 4.1 | Solder components on PCB | manual | 2d | 2017-11-15 | 2017-11-17 | 36, 37 |  | Fouric; Max | 96h |
| 51 | 4.2 | Flash current software cut onto PCB | manual | 2d | 2017-11-20 | 2017-11-21 | 50 |  | John; Julian | 66h |
| 52 | 4.3 | Produce first bootable PCB product | milestone, manual | 0d | 2017-11-22 | 2017-11-22 | 51 |  |  |  |

| ID | WBS | Task | Type | Duration | Start | Finish | Predecessors | Resources | Work |
| --- | --- | --- | --- | --- | --- | --- | --- | --- | --- |
| 53 | 5 | **Testing** |  | 13d | 2017-11-16 | 2017-12-04 |  |  | 1200h |
| 54 | 5.1 | **Design test procedures** |  | 9d | 2017-11-16 | 2017-11-28 |  |  |  |
| 55 | 5.1.1 | Design hardware tests | manual | 3d | 2017-11-16 | 2017-11-20 | 37 |  |  |
| 56 | 5.1.2 | Design software tests | manual | 4d | 2017-11-16 | 2017-11-21 | 47 |  |  |
| 57 | 5.2 | Hardware test plan review | manual | 1d | 2017-11-21 | 2017-11-21 | 55 | Fouric; John; Julian; Max | 36h |
| 58 | 5.3 | Software test plan review | manual | 1d | 2017-11-21 | 2017-11-21 | 56 | Fouric; John; Julian; Max | 36h |
| 59 | 5.4 | Perform hardware testing | manual | 5d | 2017-11-22 | 2017-11-28 | 57 | Fouric; Max | 306h |
| 60 | 5.5 | Perform software testing | manual | 5d | 2017-11-22 | 2017-11-28 | 58 | John; Julian | 306h |
| 61 | 5.6 | Bugfixing | manual | 4d | 2017-11-29 | 2017-12-04 | 59, 60 | Fouric; John; Julian; Max | 516h |
